# SPM_ASSIGNMENT1

Schedule from MS Project, 2024-09-16 to 2024-12-17.
Illinois Institute of Technology

## Calendars

- Standard: Mon-Fri 08:00-12:00, 13:00-17:00; Sat-Sun off.

## Resources

| Resource |
| --- |
| PM1 |
| PM2 |
| RE1 |
| RE4 |
| RE8 |
| RE9 |
| RE10 |
| RE11 |
| RE12 |
| RE18 |
| RE19 |
| RE20 |
| SE1 |
| SE4 |
| SE8 |
| SE9 |
| SE11 |
| SE12 |
| SE13 |
| SE17 |
| PE1 |
| PE2 |
| PE8 |
| PE9 |
| PE10 |
| PE11 |
| PE12 |
| PE16 |
| TE1 |
| TE2 |
| TE3 |
| TE7 |
| TE8 |
| TE9 |
| TE10 |
| TE15 |
| DE3 |
| DE4 |
| DE5 |
| DE6 |
| DE7 |
| DE8 |
| DE9 |
| DE14 |

## Schedule

| ID | WBS | Task | Duration | Start | Finish | Predecessors | Total slack | Free slack | Resources | Work |
| --- | --- | --- | --- | --- | --- | --- | --- | --- | --- | --- |
| 1 | 1 | **Sample Project** | 66.25d | 2024-09-16 | 2024-12-17 |  | 0d |  |  | 2690.6h |
| 2 | 1.1 | **Project Plan** | 2.33d | 2024-09-16 | 2024-09-18 |  | 0d |  |  | 28.32h |
| 3 | 1.1.1 | Write Plan | 1.29d | 2024-09-16 | 2024-09-17 |  | 0d |  | PM1 | 10.32h |
| 4 | 1.1.2 | **Review Plan** | 0.35d | 2024-09-17 | 2024-09-17 | 3 | 0d |  |  | 12.48h |
| 5 | 1.1.2.1 | Preparation for review | 0.2d | 2024-09-17 | 2024-09-17 | 3 | 0d |  | PE2; SE4; RE4; TE2 | 6.24h |
| 6 | 1.1.2.2 | Review Meeting | 0.16d | 2024-09-17 | 2024-09-17 | 5 | 0d |  | PE2; SE4; RE4; TE2; PM1 | 6.24h |
| 7 | 1.1.3 | Rework | 0.69d | 2024-09-17 | 2024-09-18 | 6 | 0d |  | PM1 | 5.52h |
| 9 | 1.2 | **Risk Mitigation and Contingency Plan** | 3.1d | 2024-09-18 | 2024-09-23 | 7 | 0.21d |  |  | 38.32h |
| 10 | 1.2.1 | Write Plan | 1.47d | 2024-09-18 | 2024-09-19 | 7 | 0.21d | 0d | PM2 | 11.76h |
| 11 | 1.2.2 | **Review Plan** | 0.51d | 2024-09-19 | 2024-09-20 | 10 | 0.21d |  |  | 17.6h |
| 12 | 1.2.2.1 | Preparation for Review | 0.37d | 2024-09-19 | 2024-09-20 | 10 | 0.21d | 0d | PE1; SE1; TE1; RE1 | 11.76h |
| 13 | 1.2.2.2 | Review Meeting | 0.15d | 2024-09-20 | 2024-09-20 | 12 | 0.21d | 0d | PE1; RE1; SE1; TE1; PM2 | 5.84h |
| 14 | 1.2.3 | Rework | 1.12d | 2024-09-20 | 2024-09-23 | 13 | 0.21d |  | PM2 | 8.96h |
| 16 | 1.3 | **Requirement** | 4.29d | 2024-09-18 | 2024-09-24 | 7 | 0d |  |  | 96.08h |
| 17 | 1.3.1 | Write Requirements | 1.4d | 2024-09-18 | 2024-09-19 | 7 | 0d |  | RE8; RE9 | 22.4h |
| 18 | 1.3.2 | Write Use Case Model | 1.92d | 2024-09-19 | 2024-09-23 | 17 | 0d |  | RE10; RE11 | 30.64h |
| 19 | 1.3.3 | **Review Requirements/Use Case Model** | 2.47d | 2024-09-19 | 2024-09-24 | 17 | 36.35d |  |  | 29.44h |
| 20 | 1.3.3.1 | Preparation for review | 0.2d | 2024-09-19 | 2024-09-19 | 17 | 38.52d | 0d | PE16; RE20; SE17; TE15 | 6.24h |
| 22 | 1.3.3.2 | Review Meeting | 0.1d | 2024-09-19 | 2024-09-20 | 20 | 38.52d | 2.17d | PE16; RE20; SE17; TE15; RE8 | 4h |
| 24 | 1.3.4 | Rework | 0.42d | 2024-09-24 | 2024-09-24 | 22 | 36.35d |  | RE8; RE9; RE10; RE11 | 13.6h |
| 26 | 1.4 | **Analysis** | 2.8d | 2024-09-23 | 2024-09-26 | 17, 18, 14 | 0d |  |  | 57.52h |
| 27 | 1.4.1 | Write Analysis Document | 0.82d | 2024-09-23 | 2024-09-24 | 17, 18, 14 | 0d |  | SE8; SE9 | 13.2h |
| 28 | 1.4.2 | **Review Analysis Document** | 0.7d | 2024-09-24 | 2024-09-25 | 27 | 57.8d |  |  | 23.84h |
| 29 | 1.4.2.1 | Preparation for Analysis Document | 0.52d | 2024-09-24 | 2024-09-24 | 27 | 57.8d | 0d | PE8; SE11; RE12; TE3 | 16.48h |
| 30 | 1.4.2.2 | Review Meeting | 0.18d | 2024-09-24 | 2024-09-25 | 29 | 57.8d | 0d | PE8; SE11; RE12; TE3; SE8 | 7.36h |
| 31 | 1.4.3 | Rework | 1.28d | 2024-09-25 | 2024-09-26 | 30 | 57.8d |  | SE8; SE9 | 20.48h |

| ID | WBS | Task | Duration | Start | Finish | Predecessors | Total slack | Free slack | Resources | Work |
| --- | --- | --- | --- | --- | --- | --- | --- | --- | --- | --- |
| 33 | 1.5 | **Design** | 12.75d | 2024-09-24 | 2024-10-11 | 27 | 0d |  |  | 230.36h |
| 34 | 1.5.1 | Write DD | 2.22d | 2024-09-24 | 2024-09-26 | 27 | 0d |  | SE12; SE17 | 35.52h |
| 35 | 1.5.2 | **Review DD** | 0.97d | 2024-09-26 | 2024-09-27 | 34 | 0d |  |  | 33.36h |
| 36 | 1.5.2.1 | Preparation for DD | 0.69d | 2024-09-26 | 2024-09-27 | 34 | 0d |  | PE1; RE1; SE1; TE1 | 22.24h |
| 37 | 1.5.2.2 | Review Meeting | 0.28d | 2024-09-27 | 2024-09-27 | 36 | 0d |  | PE1; RE1; SE1; TE1; SE12 | 11.12h |
| 38 | 1.5.3 | Rework | 1.18d | 2024-09-27 | 2024-09-30 | 35 | 0d |  | SE12; SE17 | 18.8h |
| 39 | 1.5.4 | Write Data Model(DM) | 7d | 2024-09-30 | 2024-10-09 | 38 | 0d |  | SE4; SE8 | 112h |
| 40 | 1.5.5 | **Review DM** | 0.47d | 2024-10-09 | 2024-10-10 | 39 | 0d |  |  | 16.04h |
| 41 | 1.5.5.1 | Preparation for DM | 0.33d | 2024-10-09 | 2024-10-10 | 39 | 0d |  | PE2; RE18; TE7; SE9 | 10.44h |
| 42 | 1.5.5.2 | Review Meeting | 0.14d | 2024-10-10 | 2024-10-10 | 41 | 0d |  | PE2; SE9; RE18; TE7; SE4 | 5.6h |
| 43 | 1.5.6 | Rework | 0.92d | 2024-10-10 | 2024-10-11 | 40 | 0d |  | SE4; SE8 | 14.64h |
| 45 | 1.6 | **Coding and unit test** | 42.2d | 2024-10-11 | 2024-12-10 | 33 | 0d |  |  | 1354.4h |
| 46 | 1.6.1 | Write Code | 23.75d | 2024-10-11 | 2024-11-13 | 33 | 0d |  | PE9; PE10; PE11; PE2 | 760h |
| 47 | 1.6.2 | **Unit Testing** | 15.72d | 2024-11-13 | 2024-12-05 | 46 | 4.83d |  |  | 503.12h |
| 48 | 1.6.2.1 | Prepare/Execute Test Cases | 6.4d | 2024-11-13 | 2024-11-22 | 46 | 4.83d | 0d | TE7; TE8; TE9; TE10 | 204.8h |
| 49 | 1.6.2.2 | Fix Found Defects | 5.59d | 2024-11-22 | 2024-11-29 | 48 | 4.83d | 0d | PE2; PE9; PE10; PE11 | 178.96h |
| 50 | 1.6.2.3 | Test Fixed Defects | 3.73d | 2024-11-29 | 2024-12-05 | 49 | 4.83d | 0d | TE7; TE8; TE9; TE10 | 119.36h |
| 51 | 1.6.3 | **Code Inspection** | 2.73d | 2024-12-05 | 2024-12-10 | 50 | 4.83d |  |  | 91.28h |
| 52 | 1.6.3.1 | Preparation for Code Inspection | 1.05d | 2024-12-05 | 2024-12-06 | 50 | 4.83d | 0d | PE8; SE9; TE1; RE20 | 33.6h |
| 53 | 1.6.3.2 | Code Inspection Meeting | 0.5d | 2024-12-06 | 2024-12-09 | 52 | 4.83d | 0d | PE8; PE2; RE20; SE9; TE1 | 20.08h |
| 54 | 1.6.3.3 | Rework | 1.18d | 2024-12-09 | 2024-12-10 | 53 | 4.83d |  | PE9; PE2; PE10; PE11 | 37.6h |
| 56 | 1.7 | **Testing** | 59.62d | 2024-09-24 | 2024-12-17 | 16 | 0d |  |  | 777.2h |
| 57 | 1.7.1 | Write test plan(TP) | 8.3d | 2024-09-24 | 2024-10-04 | 16 | 48.37d | 0d | TE2; TE9; TE8; TE10 | 265.6h |
| 58 | 1.7.2 | **Review TP** | 2.95d | 2024-10-04 | 2024-10-09 | 57 | 48.37d |  |  | 98.64h |
| 59 | 1.7.2.1 | Preparation for TP | 1.3d | 2024-10-04 | 2024-10-08 | 57 | 48.37d | 0d | TE3; PE16; RE12; SE11 | 41.52h |
| 60 | 1.7.2.2 | Review TP Meting | 0.52d | 2024-10-08 | 2024-10-08 | 59 | 48.37d | 0d | TE3; PE16; RE12; SE11; TE2 | 20.72h |
| 61 | 1.7.2.3 | Rework | 1.14d | 2024-10-08 | 2024-10-09 | 60 | 48.37d |  | TE2; TE9; TE8; TE10 | 36.4h |
| 62 | 1.7.3 | Execute TP (tast cases) | 11.95d | 2024-11-13 | 2024-11-29 | 46 | 0d |  | TE15; TE3 | 191.12h |
| 63 | 1.7.4 | Fix Found Defects | 5.07d | 2024-11-29 | 2024-12-06 | 62 | 0d |  | PE1; PE12; PE16 | 121.68h |
| 64 | 1.7.5 | Test Fixed Defects | 6.26d | 2024-12-06 | 2024-12-17 | 63 | 0d |  | TE15; TE3 | 100.16h |

| ID | WBS | Task | Duration | Start | Finish | Predecessors | Total slack | Free slack | Resources | Work |
| --- | --- | --- | --- | --- | --- | --- | --- | --- | --- | --- |
| 66 | 1.8 | **Documentation** | 3.27d | 2024-09-24 | 2024-09-27 | 16 | 56.35d |  |  | 108.4h |
| 67 | 1.8.1 | User Documentation | 1.05d | 2024-09-24 | 2024-09-25 | 16 | 56.35d | 0d | DE3; DE4; DE5; DE6 | 33.52h |
| 68 | 1.8.2 | **Review UD** | 2.22d | 2024-09-25 | 2024-09-27 | 67 | 56.35d |  |  | 74.88h |
| 69 | 1.8.2.1 | Preparation for UD Review | 0.84d | 2024-09-25 | 2024-09-26 | 67 | 56.35d | 0d | DE7; DE8; DE9; DE14 | 26.8h |
| 70 | 1.8.2.2 | Review UD Meeting | 0.48d | 2024-09-26 | 2024-09-26 | 69 | 56.35d | 0d | DE7; DE8; DE9; DE14; DE3 | 19.12h |
| 71 | 1.8.2.3 | Rework | 0.91d | 2024-09-26 | 2024-09-27 | 70 | 56.35d |  | DE3; DE4; DE5; DE6 | 28.96h |
