Schedule from MS Project, 2024-09-23 to 2025-04-14.
Illinois Institute of Technology

## Calendars

- Standard: Mon-Fri 08:00-12:00, 13:00-17:00; Sat-Sun off.

## Resources

| Resource |
| --- |
| RE1 |
| RE4 |
| RE10 |
| RE19 |
| RE20 |
| SE1 |
| SE4 |
| SE8 |
| SE9 |
| SE11 |
| SE12 |
| SE13 |
| SE17 |
| PE1 |
| PE8 |
| PE10 |
| PE12 |
| PE16 |
| TE1 |
| TE8 |
| TE9 |
| TE10 |
| TE15 |
| DE4 |
| DE5 |
| DE7 |
| DE8 |
| DE14 |
| PM7 |
| RE60 |
| RE61 |
| RE64 |
| RE65 |
| RE66 |
| RE67 |
| SE22 |
| SE23 |
| SE24 |
| SE34 |
| PE30 |
| PE31 |
| PE32 |
| PE33 |
| PE34 |
| PE35 |
| PE38 |
| PE39 |
| TE32 |
| TE33 |
| TE34 |
| TE38 |
| TE39 |
| TE40 |
| TE41 |
| DE37 |
| DE38 |
| DE46 |
| DE47 |
| DE48 |
| DE49 |

## Schedule

| ID | WBS | Task | Duration | Start | Finish | Predecessors | Total slack | Free slack | Resources | Work |
| --- | --- | --- | --- | --- | --- | --- | --- | --- | --- | --- |
| 1 | 1 | **Sample project2** | 145.5d | 2024-09-23 | 2025-04-14 |  | 0d |  |  | 8935.84h |
| 2 | 1.1 | **Project Plan** | 7.75d | 2024-09-23 | 2024-10-02 |  | 0d |  |  | 100.8h |
| 3 | 1.1.1 | Write Plan | 4.22d | 2024-09-23 | 2024-09-27 |  | 0d |  | PM7 | 33.76h |
| 4 | 1.1.2 | **Review Plan** | 1.48d | 2024-09-27 | 2024-09-30 | 3 | 0d |  |  | 50.56h |
| 5 | 1.1.2.1 | Preparation fo review | 1.05d | 2024-09-27 | 2024-09-30 | 3 | 0d |  | PE39; RE67; SE34; TE41 | 33.76h |
| 6 | 1.1.2.2 | Review Meeting | 0.42d | 2024-09-30 | 2024-09-30 | 5 | 0d |  | PM7; PE39; TE41; RE67; SE34 | 16.8h |
| 7 | 1.1.3 | Rework | 2.06d | 2024-09-30 | 2024-10-02 | 4 | 0d |  | PM7 | 16.48h |
| 9 | 1.2 | **Requirement** | 10.28d | 2024-10-02 | 2024-10-17 | 7 | 0d |  |  | 338.56h |
| 10 | 1.2.1 | Write requirement | 4.05d | 2024-10-02 | 2024-10-08 | 7 | 0d |  | RE66; RE65; RE4; RE1 | 129.6h |
| 11 | 1.2.2 | **Review Requirements** | 3.65d | 2024-10-08 | 2024-10-14 | 10 | 0d |  |  | 126.4h |
| 12 | 1.2.2.1 | Preparation for review | 2.43d | 2024-10-08 | 2024-10-11 | 10 | 0d |  | RE64; PE38; SE24; TE40 | 77.76h |
| 13 | 1.2.2.2 | Review Meeting | 1.22d | 2024-10-11 | 2024-10-14 | 12 | 0d |  | RE66; RE64; PE38; SE24; TE40 | 48.64h |
| 14 | 1.2.3 | Rework | 2.58d | 2024-10-14 | 2024-10-17 | 11 | 0d |  | RE66; RE65; RE1; RE4 | 82.56h |
| 16 | 1.3 | **Lab and Environment Setup** | 15.88d | 2024-10-17 | 2024-11-07 | 9 | 111.59d |  |  | 381.04h |
| 17 | 1.3.1 | **Hardware** | 13.37d | 2024-10-17 | 2024-11-05 | 9 | 111.59d | 0d |  | 320.96h |
| 18 | 1.3.1.1 | **Install Network Elements** | 5.56d | 2024-10-17 | 2024-10-24 | 9 | 111.59d | 0d |  | 133.36h |
| 19 | 1.3.1.1.1 | Routers | 0.89d | 2024-10-17 | 2024-10-17 | 9 | 111.59d | 0d | SE34; SE8; SE4 | 21.36h |
| 20 | 1.3.1.1.2 | Bridge | 4.67d | 2024-10-17 | 2024-10-24 | 19 | 111.59d |  | SE8; SE24; SE1 | 112h |
| 21 | 1.3.1.2 | Install Server | 3.44d | 2024-10-24 | 2024-10-30 | 18 | 111.59d | 0d | SE34; SE24; SE17 | 82.64h |
| 22 | 1.3.1.3 | Install Clients | 4.37d | 2024-10-30 | 2024-11-05 | 21 | 111.59d |  | SE4; SE1; SE17 | 104.96h |
| 23 | 1.3.2 | **Software** | 2.5d | 2024-11-05 | 2024-11-07 | 17 | 111.59d |  |  | 60.08h |
| 24 | 1.3.2.1 | Install Development Tools | 1.27d | 2024-11-05 | 2024-11-06 | 17 | 111.59d | 0d | SE9; SE11; SE8 | 30.4h |
| 25 | 1.3.2.2 | Install Testing Tools | 1.24d | 2024-11-06 | 2024-11-07 | 24 | 111.59d |  | SE12; SE1; SE4 | 29.68h |
| 27 | 1.4 | **Analysis/Design Document** | 10.39d | 2024-10-17 | 2024-10-31 | 9 | 0d |  |  | 207.12h |
| 28 | 1.4.1 | Write DD | 3.65d | 2024-10-17 | 2024-10-22 | 9 | 0d |  | SE22; SE23 | 58.48h |

| ID | WBS | Task | Duration | Start | Finish | Predecessors | Total slack | Free slack | Resources | Work |
| --- | --- | --- | --- | --- | --- | --- | --- | --- | --- | --- |
| 29 | 1.4.2 | **Review DD** | 2.19d | 2024-10-22 | 2024-10-24 | 28 | 0d |  |  | 76h |
| 30 | 1.4.2.1 | Preparation for DD | 1.46d | 2024-10-22 | 2024-10-24 | 28 | 0d |  | SE13; PE35; RE61; TE39 | 46.8h |
| 31 | 1.4.2.2 | Review Meeting | 0.73d | 2024-10-24 | 2024-10-24 | 30 | 0d |  | SE22; SE13; PE35; RE61; TE39 | 29.2h |
| 32 | 1.4.3 | Rework | 4.54d | 2024-10-24 | 2024-10-31 | 29 | 0d |  | SE22; SE23 | 72.64h |
| 34 | 1.5 | **Data Model** | 4.54d | 2024-10-31 | 2024-11-06 | 27 | 0d |  |  | 146.56h |
| 35 | 1.5.1 | Create Data Model | 1.94d | 2024-10-31 | 2024-11-04 | 27 | 0d |  | SE34; SE24; SE13; SE23 | 62h |
| 36 | 1.5.2 | **Review Data Model** | 0.64d | 2024-11-04 | 2024-11-04 | 35 | 0d |  |  | 21.6h |
| 37 | 1.5.2.1 | Preparation for DM | 0.48d | 2024-11-04 | 2024-11-04 | 35 | 0d |  | PE34; RE60; TE38; SE22 | 15.44h |
| 38 | 1.5.2.2 | Review Meeting | 0.15d | 2024-11-04 | 2024-11-04 | 37 | 0d |  | SE22; SE23; PE34; RE60; TE38 | 6.16h |
| 39 | 1.5.3 | Rework | 1.97d | 2024-11-04 | 2024-11-06 | 36 | 0d |  | SE34; SE24; SE13; SE23 | 62.96h |
| 41 | 1.6 | **Coding and Unit Testing** | 78.18d | 2024-11-06 | 2025-02-25 | 34 | 0d |  |  | 4083.28h |
| 42 | 1.6.1 | Write Code | 34.73d | 2024-11-06 | 2024-12-25 | 34 | 0d |  | PE33; PE34; PE32; PE31; PE30; PE35; PE38 | 1944.96h |
| 43 | 1.6.2 | **Unit Testing** | 33.88d | 2024-12-25 | 2025-02-11 | 42 | 0d |  |  | 1712.24h |
| 44 | 1.6.2.1 | Prepare/Execute Test Cases | 4.35d | 2024-12-25 | 2025-01-01 | 42 | 0d |  | TE38; TE32; TE33; TE34; TE39; TE40 | 208.96h |
| 45 | 1.6.2.2 | Fix Found Defects | 10.74d | 2025-01-01 | 2025-01-15 | 44 | 0d |  | PE33; PE34; PE30; PE31; PE32; PE35; PE38 | 601.28h |
| 46 | 1.6.2.3 | Test Fixed Defects | 18.79d | 2025-01-15 | 2025-02-11 | 45 | 0d |  | TE38; TE32; TE39; TE34; TE33; TE40 | 902h |
| 47 | 1.6.3 | **Code Inspection** | 9.57d | 2025-02-11 | 2025-02-25 | 43 | 0d |  |  | 426.08h |
| 48 | 1.6.3.1 | Preparation for Code Inspection | 3.38d | 2025-02-11 | 2025-02-14 | 43 | 0d |  | TE15; SE23; PE35; RE20 | 108h |
| 49 | 1.6.3.2 | Code Inspection Meeting | 1.8d | 2025-02-14 | 2025-02-18 | 48 | 0d |  | TE15; SE23; PE35; RE20; PE33 | 72.08h |
| 50 | 1.6.3.3 | Rework | 4.39d | 2025-02-18 | 2025-02-25 | 49 | 0d |  | PE33; PE30; PE31; PE32; PE34; PE35; PE38 | 246h |
| 52 | 1.7 | **Testing** | 127.47d | 2024-10-17 | 2025-04-14 | 9 | 0d |  |  | 2841.36h |
| 53 | 1.7.1 | Write test plan(TP) | 13.03d | 2024-10-17 | 2024-11-05 | 9 | 107.66d | 0d | TE10; TE9; TE8; TE41 | 416.96h |
| 54 | 1.7.2 | **Review TP** | 6.78d | 2024-11-05 | 2024-11-13 | 53 | 107.66d |  |  | 225.44h |
| 55 | 1.7.2.1 | Preparation for TP | 2.6d | 2024-11-05 | 2024-11-07 | 53 | 107.66d | 0d | TE1; PE8; RE19; SE22 | 83.36h |
| 56 | 1.7.2.2 | Review TP Meeting | 1.04d | 2024-11-07 | 2024-11-08 | 55 | 107.66d | 0d | TE10; TE1; PE8; RE19; SE22 | 41.68h |
| 57 | 1.7.2.3 | Rework | 3.14d | 2024-11-08 | 2024-11-13 | 56 | 107.66d |  | TE10; TE9; TE8; TE41 | 100.4h |
| 58 | 1.7.3 | Execute TP(test cases) | 18.23d | 2025-02-25 | 2025-03-21 | 41 | 0d |  | TE41; TE40; TE39; TE1; TE9; TE32; TE34; TE38 | 1166.96h |
| 59 | 1.7.4 | Fix Found Defects | 16.12d | 2025-03-21 | 2025-04-14 | 58 | 0d |  | PE1; PE10; PE12; PE8; PE30; PE32; PE34; PE33 | 1032h |

| ID | WBS | Task | Duration | Start | Finish | Predecessors | Total slack | Free slack | Resources | Work |
| --- | --- | --- | --- | --- | --- | --- | --- | --- | --- | --- |
| 61 | 1.8 | **Documentation** | 8.76d | 2024-10-17 | 2024-10-29 | 9 | 103.14d | 0d |  | 331.12h |
| 62 | 1.8.1 | User Documentation | 1.62d | 2024-10-17 | 2024-10-18 | 9 | 103.14d | 0d | DE49; DE4; DE48; DE5; DE8 | 64.8h |
| 63 | 1.8.2 | **Review UD** | 7.14d | 2024-10-18 | 2024-10-29 | 62 | 103.14d |  |  | 266.32h |
| 64 | 1.8.2.1 | Preparation for UD review meeting | 2.43d | 2024-10-18 | 2024-10-23 | 62 | 103.14d | 0d | DE14; PE16; RE10; SE9 | 77.76h |
| 65 | 1.8.2.2 | Review UD Meeting | 1.39d | 2024-10-23 | 2024-10-24 | 64 | 103.14d | 0d | DE5; DE14; PE16; RE10; SE9 | 55.6h |
| 66 | 1.8.2.3 | Rework | 3.32d | 2024-10-24 | 2024-10-29 | 65 | 103.14d |  | DE49; DE4; DE48; DE5; DE8 | 132.96h |
| 68 | 1.9 | **Training** | 15.57d | 2024-10-29 | 2024-11-20 | 61 | 103.14d |  |  | 506h |
| 69 | 1.9.1 | Training Handouts(TH) | 9.69d | 2024-10-29 | 2024-11-12 | 61 | 103.14d | 0d | DE47; DE46; DE38; DE37 | 310h |
| 70 | 1.9.2 | **Review Training Handouts(TH)** | 5.88d | 2024-11-12 | 2024-11-20 | 69 | 103.14d |  |  | 196h |
| 71 | 1.9.2.1 | Preparation for TH review meeting | 2.42d | 2024-11-12 | 2024-11-14 | 69 | 103.14d | 0d | DE7; PE12; RE60; SE22 | 77.52h |
| 72 | 1.9.2.2 | Review TH Meeting | 0.97d | 2024-11-14 | 2024-11-15 | 71 | 103.14d | 0d | DE47; DE7; PE12; RE60; SE22 | 38.72h |
| 73 | 1.9.2.3 | Rework | 2.49d | 2024-11-15 | 2024-11-20 | 72 | 103.14d |  | DE47; DE46; DE38; DE37 | 79.76h |
